# Práctica GPT

How a schedule from MS Project changed from version to version. A marks actual dates.

## Version 1 (saved 2012-06-18)

Note of the change: Más

| ID | WBS | Task | Duration | Start | Finish | Predecessors | Total float | Constraint |
| --- | --- | --- | --- | --- | --- | --- | --- | --- |
| 1 | 1 | **Proyecto Empresa Bancaria** | 65.33d | 2012-01-09 | 2012-04-09 |  | 0d |  |
| 2 | 1.1 | **Analizar las actividades actualmente realizadas sobre la gestión de la configuración** | 5.21d | 2012-01-09 | 2012-01-16 |  | 0.07d |  |
| 3 |  | HITO Inicio del Analisis | 0d | 2012-01-09 | 2012-01-09 |  | 93.28d |  |
| 4 | 1.1.2 | **Entrevistas** | 2.78d | 2012-01-09 | 2012-01-11 |  | 0.07d |  |
| 5 |  | Entrevistas con el cliente | 2.54d | 2012-01-09 | 2012-01-11 |  | 0.31d |  |
| 6 |  | Identificacion de los Stakeholders | 2.78d | 2012-01-09 | 2012-01-11 |  | 0.07d |  |
| 7 | 1.1.3 | **Recopilar documentacion** | 0.87d | 2012-01-11 | 2012-01-12 | 4 | 0.07d |  |
| 8 |  | Estudio preliminar de las actividades realizadas en la actualidad | 0.87d | 2012-01-11 | 2012-01-12 | 5, 6 | 0.07d |  |
| 9 | 1.1.4 | **Analizar documentacion** | 0.58d | 2012-01-12 | 2012-01-13 | 7 | 0.07d |  |
| 10 |  | Aceptacion de la documentacion recogida | 0.58d | 2012-01-12 | 2012-01-13 | 8 | 0.07d |  |
| 11 |  | HITO Aceptacion de la documentacion recogida | 0d | 2012-01-13 | 2012-01-13 | 10 | 0.07d |  |
| 12 | 1.1.5 | **Informe** | 0.98d | 2012-01-13 | 2012-01-16 | 11 | 0d |  |
| 13 |  | Preparar borrador informe | 0.28d | 2012-01-13 | 2012-01-13 | 10 | 0.07d |  |
| 14 |  | Aceptacion del borrador | 0.14d | 2012-01-13 | 2012-01-13 | 13 | 0.07d |  |
| 15 |  | Preparar informe | 0.2d | 2012-01-13 | 2012-01-13 | 14 | 0.07d |  |
| 16 |  | Aprobacion del informe | 0.08d | 2012-01-13 | 2012-01-13 | 15 | 0.07d |  |
| 17 |  | Entrega del documento del analisis de la situacion actual | 0.21d | 2012-01-16 | 2012-01-16 | 16 | 0d | must start on 2012-01-16 |
| 18 |  | Finalizacion del Analisis | 0d | 2012-01-16 | 2012-01-16 | 4, 7, 9, 12 | 1.27d |  |
| 19 | 1.2 | **Definir el modelo de datos y la especificación de requisitos de la CMDB** | 5.52d | 2012-01-16 | 2012-01-23 | 18 | 1.27d |  |
| 20 |  | Inicio de la definicion | 0d | 2012-01-16 | 2012-01-16 | 18 | 1.27d |  |
| 21 | 1.2.2 | **Obtencion informacion CI's** | 3.55d | 2012-01-16 | 2012-01-19 | 20 | 1.27d |  |
| 22 |  | Identificar familia de CI's | 3.55d | 2012-01-16 | 2012-01-19 | 18 | 1.27d |  |
| 23 |  | Identificar atributos que vamos a recopilar de cada CI's | 3.55d | 2012-01-16 | 2012-01-19 | 18 | 1.27d |  |
| 24 |  | Identificar la fuente de datos de cada CI's | 3.55d | 2012-01-16 | 2012-01-19 | 18 | 1.27d |  |
| 25 |  | Identificar datos a integrar | 3.55d | 2012-01-16 | 2012-01-19 | 18 | 1.27d |  |
| 26 |  | Identificar relaciones entre CI's | 3.55d | 2012-01-16 | 2012-01-19 | 18 | 1.27d |  |
| 27 | 1.2.3 | **Informe de modelo de datos** | 1.76d | 2012-01-19 | 2012-01-23 | 21 | 1.28d |  |
| 28 |  | Preparar borrador informe | 0.56d | 2012-01-19 | 2012-01-20 | 21 | 1.28d |  |
| 29 |  | Aceptacion del borrador | 0.45d | 2012-01-20 | 2012-01-20 | 28 | 1.28d |  |
| 30 |  | Preparar informe | 0.47d | 2012-01-20 | 2012-01-23 | 29 | 1.28d |  |
| 31 |  | Aprobacion del informe | 0.28d | 2012-01-23 | 2012-01-23 | 30 | 1.28d |  |
| 32 |  | HITO Aceptacion de la documentacion recogida | 0d | 2012-01-23 | 2012-01-23 | 31 | 1.28d |  |
| 33 | 1.2.4 | **Informe de especificacion de requisitos** | 1.76d | 2012-01-19 | 2012-01-23 | 21 | 1.27d |  |
| 34 |  | Preparar borrador informe | 0.56d | 2012-01-19 | 2012-01-20 | 21 | 1.27d |  |
| 35 |  | Aceptacion del borrador | 0.45d | 2012-01-20 | 2012-01-20 | 34 | 1.27d |  |
| 36 |  | Preparar informe | 0.47d | 2012-01-20 | 2012-01-23 | 35 | 1.27d |  |
| 37 |  | Aprobacion del informe | 0.28d | 2012-01-23 | 2012-01-23 | 36 | 1.27d |  |
| 38 |  | HITO Aceptacion de la documentacion recogida | 0d | 2012-01-23 | 2012-01-23 | 37 | 1.27d |  |
| 39 |  | Entrega del documento de la especificacion de requisitos y modelo de datos | 0.21d | 2012-01-23 | 2012-01-23 | 32, 38 | 1.27d |  |
| 40 |  | Finalizacion de la definicion | 0d | 2012-01-23 | 2012-01-23 | 21, 27, 33, 39 | 1.27d |  |
| 41 | 1.3 | **Definir las fuentes de datos y el mecanismo de obtención de los mismos** | 44.62d | 2012-01-23 | 2012-03-26 | 40 | 9.99d |  |
| 42 |  | Inicio de la definicion | 0d | 2012-01-23 | 2012-01-23 | 40 | 54.6d |  |
| 43 | 1.3.2 | **Diseño de arquitecturas** | 42.09d | 2012-01-25 | 2012-03-23 | 40 | 0d |  |
| 44 |  | Investigar la mejor solucion para obtener los datos | 5.41d | 2012-01-25 | 2012-02-01 | 40 | 28.73d | start no earlier than 2012-01-25 |
| 45 |  | Probar las distintas soluciones | 5.4d | 2012-02-01 | 2012-02-08 | 62, 39, 44 | 28.73d |  |
| 46 |  | Validar las distintas soluciones | 1.3d | 2012-03-20 | 2012-03-21 | 45 | 0d | as late as possible |
| 47 |  | Preparar un informe con las distintas soluciones | 1.25d | 2012-03-21 | 2012-03-23 | 46 | 0d |  |
| 48 | 1.3.3 | **Entrevistas con el cliente** | 0.75d | 2012-03-23 | 2012-03-23 | 43 | 0d |  |
| 49 |  | Validar con el cliente la solucion de obtencion de datos | 0.75d | 2012-03-23 | 2012-03-23 | 47 | 0d |  |
| 50 |  | Definicion del documento de arquitectura de datos | 0.5d | 2012-03-23 | 2012-03-26 | 47, 49 | 0d |  |
| 51 |  | Finalizacion de la definicion | 0d | 2012-03-26 | 2012-03-26 | 43, 48, 50 | 0d |  |
| 52 |  | Empezar la extracción de datos de los CI's | 0.44d | 2012-01-23 | 2012-01-24 |  | 54.16d |  |
| 53 | 1.4 | **Implementar el sistema de gestión de la configuración** | 15.9d | 2012-01-23 | 2012-02-14 | 19 | 0d |  |
| 54 |  | Inicio de la implementacion | 0d | 2012-01-23 | 2012-01-23 | 19 | 1.27d |  |
| 55 |  | Definir el mecanismo de federacion/integracion de la CMBD | 4.69d | 2012-01-25 | 2012-01-31 | 54 | 0d | must start on 2012-01-25 |
| 56 |  | Definir reglas de conciliacion | 6.82d | 2012-01-31 | 2012-02-09 | 55 | 0d |  |
| 57 |  | Configurar y parametrizar la solucion | 3.12d | 2012-02-09 | 2012-02-14 | 56 | 0d |  |
| 58 |  | Finalizacion de la implementacion | 0d | 2012-02-14 | 2012-02-14 | 55, 56, 57 | 0d |  |
| 59 | 1.5 | **Probar el sistema de gestión de la configuración** | 65.33d | 2012-01-09 | 2012-04-09 |  | 0d |  |
| 60 |  | Inicio de las pruebas | 0d | 2012-01-09 | 2012-01-09 |  | 65.33d |  |
| 61 | 1.5.2 | **Definir plan de pruebas** | 45.12d | 2012-01-23 | 2012-03-26 |  | 0d |  |
| 62 |  | Plan de pruebas para la identificacion de CI's | 0.25d | 2012-01-23 | 2012-01-23 | 19 | 35.16d |  |
| 63 |  | Plan de pruebas para la implementacion de la CMBD | 0.5d | 2012-03-26 | 2012-03-26 | 51 | 0d |  |
| 64 |  | Plan de pruebas para la aplicación en tiempo real | 0.5d | 2012-02-14 | 2012-02-15 | 53 | 28.71d |  |
| 65 |  | Presentar plan de pruebas | 0.21d | 2012-03-26 | 2012-03-27 | 62, 63, 64 | 0d |  |
| 66 |  | Recoger feedback | 1d | 2012-03-27 | 2012-03-28 | 65 | 0d |  |
| 67 |  | Moficar plan de pruebas original con el nuevo feedback | 0.25d | 2012-03-28 | 2012-03-28 | 66 | 0d |  |
| 68 |  | Interpretar resultados de las pruebas | 0.62d | 2012-04-05 | 2012-04-05 | 82, 75, 45 | 0d |  |
| 69 |  | Preparar informe con el resultado de las pruebas | 1.45d | 2012-04-05 | 2012-04-09 | 68 | 0d |  |
| 70 |  | Finalizacion de las pruebas | 0d | 2012-04-09 | 2012-04-09 | 61, 65, 66, 67, 69 | 0d |  |

| ID | WBS | Task | Duration | Start | Finish | Predecessors | Total float |
| --- | --- | --- | --- | --- | --- | --- | --- |
| 71 | 1.6 | **Importar datos de las herramientas de descubrimiento** | 33.32d | 2012-02-14 | 2012-03-30 | 58 | 0d |
| 72 |  | Inicio de la importacion | 0d | 2012-02-14 | 2012-02-14 | 58 | 0d |
| 73 |  | Definir plan de importacion | 0.67d | 2012-02-14 | 2012-02-15 | 72 | 0d |
| 74 |  | Localizar y comprobar la evolucion de la importacion | 30d | 2012-02-15 | 2012-03-28 | 73 | 0d |
| 75 |  | Pruebas de la aplicación en tiempo real | 1.1d | 2012-03-28 | 2012-03-29 | 67, 74 | 0d |
| 76 |  | Verificar la correcta recepcion de datos de la CMBD | 1.34d | 2012-03-29 | 2012-03-30 | 75 | 0d |
| 77 |  | Entrega del documento de la importacion de datos | 0.21d | 2012-03-30 | 2012-03-30 | 76 | 0d |
| 78 |  | Finalizacion de la importacion | 0d | 2012-03-30 | 2012-03-30 | 73, 74, 75, 77 | 0d |
| 79 | 1.7 | **Realizar el Go live y apoyo pos-implementacion** | 4.66d | 2012-03-30 | 2012-04-06 | 78 | 0d |
| 80 |  | Inicio del apoyo pos-implementacion | 0d | 2012-03-30 | 2012-03-30 | 78 | 0d |
| 81 |  | Observar la aplicación en funcionamiento | 0.69d | 2012-03-30 | 2012-04-02 | 80 | 0d |
| 82 |  | Pruebas finales | 2.61d | 2012-04-02 | 2012-04-05 | 81 | 0d |
| 83 |  | Reunion con los usuarios | 1d | 2012-04-05 | 2012-04-06 | 82 | 0.71d |
| 84 |  | Realizar ajustes de control | 0.36d | 2012-04-06 | 2012-04-06 | 83, 82 | 0.71d |
| 85 |  | Finalizacion del apoyo pos-implementacion | 0d | 2012-04-06 | 2012-04-06 | 84, 81, 82, 83 | 0.71d |

## Version 2 (saved 2012-06-20)

Note of the change: Mäs

Last finish 2012-04-09 → 2012-07-11 (+93d).

Added:

| ID | Task | Duration | Start | Finish | Predecessors | Resources |
| --- | --- | --- | --- | --- | --- | --- |
| 1 | **Proyecto entidad financiera** | 75.89d | 2012-03-28 | 2012-07-11 |  |  |
| 2 | **Analizar la actividad actual** | 6.1d | 2012-03-28 | 2012-04-05 |  |  |
| 3 | Inicio del Analisis | 0d | 2012-03-28 | 2012-03-28 |  |  |
| 7 | **Agrupar documentación** | 0.5d | 2012-03-30 | 2012-03-30 |  |  |
| 8 | Estudio preliminar de las actividades realizadas | 0.5d | 2012-03-30 | 2012-03-30 | 6 | Becario Junior 1 [40%]; Consultor senior Ingeniero Informatico 1; Consultor senior Ingeniero Informatico 2; Consultor especializado en ITIL |
| 10 | Presentación | 0.5d | 2012-03-30 | 2012-03-30 | 8 | Becario Junior 1 [40%]; Consultor senior Ingeniero Informatico 1 |
| 11 | HITO Aceptación de la documentacion recogida | 0d | 2012-03-30 | 2012-03-30 | 10 |  |
| 13 | Borrador | 0.5d | 2012-04-02 | 2012-04-02 | 11 | Becario Junior 1 [40%]; Becario Junior 2 [40%]; Consultor especializado en ITIL; Consultor senior Ingeniero Informatico 2; Consultor senior Ingeniero Informatico 1 |
| 15 | Prepararación | 2d | 2012-04-02 | 2012-04-04 | 14 | Becario Junior 1 [40%]; Becario Junior 2 [40%]; Consultor especializado en ITIL; Consultor senior Ingeniero Informatico 2; Consultor senior Ingeniero Informatico 1 |
| 16 | Aprobacion | 0.2d | 2012-04-04 | 2012-04-04 | 15 | Consultor especializado en ITIL; Consultor senior Ingeniero Informatico 1; Becario Junior 1 [40%] |
| 17 | Entrega del documento | 0.2d | 2012-04-04 | 2012-04-05 | 16 | Consultor especializado en ITIL; Consultor senior Ingeniero Informatico 1; Becario Junior 1 [40%] |
| 18 | Finalización | 0d | 2012-04-05 | 2012-04-05 | 17 |  |
| 38 | HITO Aceptación | 0d | 2012-04-19 | 2012-04-19 | 37 | Becario Junior 1 [40%]; Becario Junior 2 [40%]; Consultor especializado en ITIL; Consultor senior Ingeniero Informatico 2; Consultor senior Ingeniero Informatico 1 |
| 44 | Investigar la mejor solución para obtener los datos | 2d | 2012-04-19 | 2012-04-23 | 42 | Becario Junior 1 [40%]; Becario Junior 2 [40%]; Consultor especializado en ITIL; Consultor senior Ingeniero Informatico 2; Consultor senior Ingeniero Informatico 1 |
| 49 | Validar con el cliente la solución de obtencion de datos | 0.5d | 2012-04-27 | 2012-04-27 | 47 | Becario Junior 1 [40%]; Becario Junior 2 [40%]; Consultor especializado en ITIL; Consultor senior Ingeniero Informatico 2; Consultor senior Ingeniero Informatico 1 |
| 50 | Definición del documento de arquitectura de datos | 1d | 2012-04-27 | 2012-04-30 | 48 | Becario Junior 1 [40%]; Becario Junior 2 [40%]; Consultor senior Ingeniero Informatico 1; Consultor senior Ingeniero Informatico 2 |
| 51 | Finalización de la definiciónn | 0d | 2012-04-30 | 2012-04-30 | 50 | Becario Junior 1 |
| 55 | Definir el mecanismo de integración de la CMBD | 4d | 2012-05-01 | 2012-05-07 | 54 | Becario Junior 1; Becario Junior 2; Consultor senior Ingeniero Informatico 1; Consultor senior Ingeniero Informatico 3 (Externo); Consultor senior Ingeniero Informatico 4 (Externo) |
| 56 | Definir reglas de conciliación | 20d | 2012-05-07 | 2012-06-04 | 55 | Becario Junior 1; Becario Junior 2; Consultor senior Ingeniero Informatico 1; Consultor senior Ingeniero Informatico 3 (Externo); Consultor senior Ingeniero Informatico 4 (Externo) |
| 57 | Configurar y parametrizar la solución | 5.39d | 2012-06-04 | 2012-06-11 | 56 | Becario Junior 1; Becario Junior 2; Consultor senior Ingeniero Informatico 1; Consultor senior Ingeniero Informatico 3 (Externo); Consultor senior Ingeniero Informatico 4 (Externo) |
| 58 | Implementación (externo) | 25d | 2012-05-01 | 2012-06-05 | 54 | Proveedor A |
| 67 | Modificar plan de pruebas original con el nuevo feedback | 1d | 2012-06-19 | 2012-06-20 | 66 | Becario Junior 1 [40%]; Becario Junior 2 [40%]; Consultor senior Ingeniero Informatico 1; Consultor senior Ingeniero Informatico 2; Consultor senior Ingeniero Informatico 3 (Externo); Consultor especializado en ITIL [30%] |

Removed: 1 Proyecto Empresa Bancaria; 2 Analizar las actividades actualmente realizadas sobre la gestión de la configuración; 3 HITO Inicio del Analisis; 7 Recopilar documentacion; 8 Estudio preliminar de las actividades realizadas en la actualidad; 10 Aceptacion de la documentacion recogida; 17 Entrega del documento del analisis de la situacion actual; 18 Finalizacion del Analisis; 32 HITO Aceptacion de la documentacion recogida; 34 Preparar borrador informe; 36 Preparar informe; 37 Aprobacion del informe; 38 HITO Aceptacion de la documentacion recogida; 44 Investigar la mejor solucion para obtener los datos; 49 Validar con el cliente la solucion de obtencion de datos; 50 Definicion del documento de arquitectura de datos; 51 Finalizacion de la definicion; 55 Definir el mecanismo de federacion/integracion de la CMBD; 56 Definir reglas de conciliacion; 57 Configurar y parametrizar la solucion; 58 Finalizacion de la implementacion; 67 Moficar plan de pruebas original con el nuevo feedback

Changed:

| ID | Task | Start | Finish | Duration | Total float | Predecessors | Other |
| --- | --- | --- | --- | --- | --- | --- | --- |
| 4 | **Entrevistas** | 2012-01-09 → 2012-03-28 (+79d) | 2012-01-11 → 2012-03-29 (+78d) | 2.78d → 2d | 0.07d → 0d |  |  |
| 5 | Entrevistas con el cliente | 2012-01-09 → 2012-03-28 (+79d) | 2012-01-11 → 2012-03-29 (+78d) | 2.54d → 1.5d | 0.31d → 0d | none → 3 | resources Consultor especializado en ITIL [50%]; Consultor senior Ingeniero Informatico 1 [50%]; Consultor senior Ingeniero Informatico 2 [50%]; Becario Junior 2 [30%]; Consultor senior Ingeniero Informatico 3 (Externo) [50%] → Becario Junior 1 [40%]; Becario Junior 2 [40%]; Consultor especializado en ITIL; Consultor senior Ingeniero Informatico 1; Consultor senior Ingeniero Informatico 2 |
| 6 | Identificacion de los Stakeholders | 2012-01-09 → 2012-03-29 (+80d) | 2012-01-11 → 2012-03-29 (+78d) | 2.78d → 0.5d | 0.07d → 0d | none → 5 | resources Consultor especializado en ITIL [50%]; Consultor senior Ingeniero Informatico 2 [50%]; Consultor senior Ingeniero Informatico 1 [50%]; Becario Junior 1 [30%]; Consultor senior Ingeniero Informatico 3 (Externo) [50%] → Consultor especializado en ITIL; Becario Junior 2 [40%]; Consultor senior Ingeniero Informatico 2 |
| 9 | **Analizar documentacion** | 2012-01-12 → 2012-03-30 (+78d) | 2012-01-13 → 2012-03-30 (+77d) | 0.58d → 0.5d | 0.07d → 0d | Recopilar documentacion → none |  |
| 12 | **Informe** | 2012-01-13 → 2012-04-02 (+80d) | 2012-01-16 → 2012-04-05 (+80d) | 0.98d → 3.1d |  | 32 → none |  |
| 14 | Aceptacion del borrador | 2012-01-13 → 2012-04-02 (+80d) | 2012-01-13 → 2012-04-02 (+80d) | 0.14d → 0.2d | 0.07d → 0d | 28 → 13 | resources Consultor especializado en ITIL; Consultor senior Ingeniero Informatico 1; Consultor senior Ingeniero Informatico 2; Becario Junior 1 [30%]; Becario Junior 2 [30%] → Becario Junior 1; Consultor senior Ingeniero Informatico 1 |
| 19 | **Definir el modelo de datos y la especificación de requisitos de la CMDB** | 2012-01-16 → 2012-04-05 (+80d) | 2012-01-23 → 2012-04-19 (+87d) | 5.52d → 10.4d | 1.27d → 0d | Finalizacion del Analisis → none |  |
| 20 | Inicio de la definicion | 2012-01-16 → 2012-04-05 (+80d) | 2012-01-16 → 2012-04-05 (+80d) |  | 1.27d → 0d | Finalizacion del Analisis → 18 |  |
| 21 | **Obtencion informacion CI's** | 2012-01-16 → 2012-04-05 (+80d) | 2012-01-19 → 2012-04-11 (+83d) | 3.55d → 4.5d | 1.27d → 0d | 20 → none |  |
| 22 | Identificar familia de CI's | 2012-01-16 → 2012-04-05 (+80d) | 2012-01-19 → 2012-04-06 (+78d) | 3.55d → 1.5d | 1.27d → 0d | Finalizacion del Analisis → 20 | resources Becario Junior 1 [6%]; Becario Junior 2 [6%]; Consultor senior Ingeniero Informatico 1 [20%]; Consultor senior Ingeniero Informatico 2 [20%]; Consultor senior Ingeniero Informatico 3 (Externo) [20%] → Becario Junior 1 [20%]; Becario Junior 2 [20%]; Consultor senior Ingeniero Informatico 1 [20%]; Consultor senior Ingeniero Informatico 2 [20%] |
| 23 | Identificar atributos que vamos a recopilar de cada CI's | 2012-01-16 → 2012-04-05 (+80d) | 2012-01-19 → 2012-04-06 (+78d) | 3.55d → 1.5d | 1.27d → 0d | Finalizacion del Analisis → 20 | resources Becario Junior 1 [6%]; Becario Junior 2 [6%]; Consultor senior Ingeniero Informatico 1 [20%]; Consultor senior Ingeniero Informatico 2 [20%]; Consultor senior Ingeniero Informatico 3 (Externo) [20%] → Becario Junior 1 [20%]; Becario Junior 2 [20%]; Consultor senior Ingeniero Informatico 1 [20%]; Consultor senior Ingeniero Informatico 2 [20%] |
| 24 | Identificar la fuente de datos de cada CI's | 2012-01-16 → 2012-04-05 (+80d) | 2012-01-19 → 2012-04-06 (+78d) | 3.55d → 1.5d | 1.27d → 0d | Finalizacion del Analisis → 20 | resources Becario Junior 1 [6%]; Becario Junior 2 [6%]; Consultor senior Ingeniero Informatico 1 [20%]; Consultor senior Ingeniero Informatico 2 [20%]; Consultor senior Ingeniero Informatico 3 (Externo) [20%] → Becario Junior 1 [20%]; Becario Junior 2 [20%]; Consultor senior Ingeniero Informatico 1 [20%]; Consultor senior Ingeniero Informatico 2 [20%] |
| 25 | Identificar datos a integrar | 2012-01-16 → 2012-04-05 (+80d) | 2012-01-19 → 2012-04-06 (+78d) | 3.55d → 1.5d | 1.27d → 0d | Finalizacion del Analisis → 20 | resources Becario Junior 1 [6%]; Becario Junior 2 [6%]; Consultor senior Ingeniero Informatico 1 [20%]; Consultor senior Ingeniero Informatico 2 [20%]; Consultor senior Ingeniero Informatico 3 (Externo) [20%] → Becario Junior 1 [20%]; Becario Junior 2 [20%]; Consultor senior Ingeniero Informatico 1 [20%]; Consultor senior Ingeniero Informatico 2 [20%] |
| 26 | Identificar relaciones entre CI's | 2012-01-16 → 2012-04-06 (+81d) | 2012-01-19 → 2012-04-11 (+83d) | 3.55d → 3d | 1.27d → 0d | Finalizacion del Analisis → 22, 23, 24, 25 | resources Becario Junior 1 [6%]; Becario Junior 2 [6%]; Consultor senior Ingeniero Informatico 1 [20%]; Consultor senior Ingeniero Informatico 2 [20%]; Consultor senior Ingeniero Informatico 3 (Externo) [20%] → none |
| 27 | **Informe de modelo de datos** | 2012-01-19 → 2012-04-11 (+83d) | 2012-01-23 → 2012-04-16 (+84d) | 1.76d → 2.9d | 1.28d → 0d | 21 → none |  |
| 28 | Preparar borrador informe | 2012-01-13 → 2012-04-11 (+89d) | 2012-01-13 → 2012-04-12 (+90d) | 0.28d → 0.5d | 0.07d → 0d | Aceptacion de la documentacion recogida → 26 | resources Becario Junior 1 [30%]; Becario Junior 2 [30%]; Consultor especializado en ITIL; Consultor senior Ingeniero Informatico 1; Consultor senior Ingeniero Informatico 2 → Becario Junior 1 [40%]; Becario Junior 2 [40%]; Consultor senior Ingeniero Informatico 2; Consultor senior Ingeniero Informatico 1 |
| 29 | Aceptacion del borrador | 2012-01-20 → 2012-04-12 (+83d) | 2012-01-20 → 2012-04-12 (+83d) | 0.45d → 0.2d | 1.28d → 0d | 34 → 28 | resources Consultor senior Ingeniero Informatico 1; Becario Junior 1 [30%]; Consultor senior Ingeniero Informatico 3 (Externo) [50%] → Consultor senior Ingeniero Informatico 1; Becario Junior 1 [40%] |
| 30 | Preparar informe | 2012-01-13 → 2012-04-12 (+90d) | 2012-01-13 → 2012-04-16 (+94d) | 0.2d → 2d | 0.07d → 0d | 14 → 29 | resources Becario Junior 1 [30%]; Becario Junior 2 [30%]; Consultor especializado en ITIL; Consultor senior Ingeniero Informatico 1 → Becario Junior 1 [40%]; Becario Junior 2 [40%]; Consultor especializado en ITIL; Consultor senior Ingeniero Informatico 2; Consultor senior Ingeniero Informatico 1 |
| 31 | Aprobacion del informe | 2012-01-13 → 2012-04-16 (+94d) | 2012-01-13 → 2012-04-16 (+94d) | 0.08d → 0.2d | 0.07d → 0d |  | resources Consultor especializado en ITIL; Consultor senior Ingeniero Informatico 1; Consultor senior Ingeniero Informatico 2 → Consultor especializado en ITIL; Consultor senior Ingeniero Informatico 1; Becario Junior 1 [40%] |
| 32 | HITO Aceptacion de la documentacion recogida | 2012-01-13 → 2012-04-16 (+94d) | 2012-01-13 → 2012-04-16 (+94d) |  | 0.07d → 0d | Aceptacion de la documentacion recogida → 31 |  |
| 33 | **Informe de especificacion de requisitos** | 2012-01-19 → 2012-04-16 (+88d) | 2012-01-23 → 2012-04-19 (+87d) | 1.76d → 2.9d | 1.27d → 0d | 21 → none |  |
| 34 | Preparar borrador informe | 2012-01-19 → 2012-04-16 (+88d) | 2012-01-20 → 2012-04-16 (+87d) | 0.56d → 0.5d | 1.28d → 0d | 21 → 32 | resources Consultor senior Ingeniero Informatico 1; Becario Junior 1 [30%]; Consultor senior Ingeniero Informatico 3 (Externo) [50%] → Becario Junior 1 [40%]; Becario Junior 2 [40%]; Consultor especializado en ITIL; Consultor senior Ingeniero Informatico 2; Consultor senior Ingeniero Informatico 1 |
| 35 | Aceptacion del borrador | 2012-01-20 → 2012-04-17 (+88d) | 2012-01-20 → 2012-04-17 (+88d) | 0.45d → 0.2d | 1.27d → 0d | Preparar borrador informe → 34 | resources Consultor senior Ingeniero Informatico 2; Becario Junior 2 [30%]; Consultor senior Ingeniero Informatico 3 (Externo) [50%] → Consultor especializado en ITIL; Consultor senior Ingeniero Informatico 1; Becario Junior 1 [40%] |
| 36 | Preparar informe | 2012-01-20 → 2012-04-17 (+88d) | 2012-01-23 → 2012-04-19 (+87d) | 0.47d → 2d | 1.28d → 0d | 29 → 35 | resources Consultor senior Ingeniero Informatico 1; Becario Junior 1 [30%]; Consultor senior Ingeniero Informatico 3 (Externo) [50%] → Becario Junior 1 [40%]; Becario Junior 2 [40%]; Consultor especializado en ITIL; Consultor senior Ingeniero Informatico 2; Consultor senior Ingeniero Informatico 1 |
| 37 | Aprobacion del informe | 2012-01-23 → 2012-04-19 (+87d) | 2012-01-23 → 2012-04-19 (+87d) | 0.28d → 0.2d | 1.28d → 0d |  | resources Consultor senior Ingeniero Informatico 1; Consultor senior Ingeniero Informatico 3 (Externo) [25%]; Consultor especializado en ITIL [50%] → Consultor especializado en ITIL; Consultor senior Ingeniero Informatico 1; Becario Junior 1 [40%] |
| 39 | Entrega del documento de la especificacion de requisitos y modelo de datos | 2012-01-23 → 2012-04-19 (+87d) | 2012-01-23 → 2012-04-19 (+87d) | 0.21d → 0.1d | 1.27d → 0d | HITO Aceptacion de la documentacion recogida, HITO Aceptacion de la documentacion recogida → 38 | resources Consultor senior Ingeniero Informatico 3 (Externo) [25%] → Consultor especializado en ITIL; Consultor senior Ingeniero Informatico 1; Becario Junior 1 [40%] |
| 40 | Finalizacion de la definicion | 2012-01-23 → 2012-04-19 (+87d) | 2012-01-23 → 2012-04-19 (+87d) |  | 1.27d → 0d | 21, 27, 33, 39 → 39 |  |
| 41 | **Definir las fuentes de datos y el mecanismo de obtención de los mismos** | 2012-01-23 → 2012-04-19 (+87d) | 2012-03-26 → 2012-05-01 (+36d) | 44.62d → 8d | 9.99d → 0d | 40 → none |  |
| 42 | Inicio de la definicion | 2012-01-23 → 2012-04-19 (+87d) | 2012-01-23 → 2012-04-19 (+87d) |  | 54.6d → 0d |  |  |
| 43 | **Diseño de arquitecturas** | 2012-01-25 → 2012-04-19 (+85d) | 2012-03-23 → 2012-04-26 (+34d) | 42.09d → 5.5d |  | 40 → none |  |
| 45 | Probar las distintas soluciones | 2012-02-01 → 2012-04-23 (+82d) | 2012-02-08 → 2012-04-25 (+77d) | 5.4d → 2d | 28.73d → 0d | 62, 39, Investigar la mejor solucion para obtener los datos → 44 | resources Becario Junior 1 [15%]; Consultor senior Ingeniero Informatico 1 [50%]; Becario Junior 2 [15%]; Consultor senior Ingeniero Informatico 2 [50%] → Becario Junior 1 [50%]; Becario Junior 2 [50%]; Consultor senior Ingeniero Informatico 1 [50%]; Consultor senior Ingeniero Informatico 2 [25%] |
| 46 | Validar las distintas soluciones | 2012-03-20 → 2012-04-23 (+34d) | 2012-03-21 → 2012-04-25 (+35d) | 1.3d → 2d |  | 45 → 45FF | constraint as late as possible → none; resources Becario Junior 1 [15%]; Consultor senior Ingeniero Informatico 1 [50%]; Becario Junior 2 [15%]; Consultor senior Ingeniero Informatico 2 [50%]; Consultor senior Ingeniero Informatico 3 (Externo) → Becario Junior 1 [50%]; Becario Junior 2 [50%]; Consultor senior Ingeniero Informatico 1 [50%]; Consultor senior Ingeniero Informatico 2 [25%] |
| 47 | Preparar un informe con las distintas soluciones | 2012-03-21 → 2012-04-25 (+35d) | 2012-03-23 → 2012-04-26 (+34d) | 1.25d → 1.5d |  | 46 → 46, 44 | resources Becario Junior 1 [15%]; Consultor senior Ingeniero Informatico 1 [50%]; Becario Junior 2 [15%]; Consultor senior Ingeniero Informatico 2 [50%] → Becario Junior 1 [40%]; Consultor senior Ingeniero Informatico 1; Becario Junior 2 [40%]; Consultor senior Ingeniero Informatico 2; Consultor senior Ingeniero Informatico 3 (Externo) |
| 48 | **Entrevistas con el cliente** | 2012-03-23 → 2012-04-27 (+35d) | 2012-03-23 → 2012-04-27 (+35d) | 0.75d → 0.5d |  | 43 → none |  |
| 52 | Empezar la extracción de datos de los CI's | 2012-01-23 → 2012-04-30 (+98d) | 2012-01-24 → 2012-05-01 (+98d) | 0.44d → 1d | 54.16d → 0d | none → 51 | resources Consultor senior Ingeniero Informatico 3 (Externo) [35%]; Becario Junior 1 [30%]; Becario Junior 2 [30%] → Becario Junior 1 [40%]; Becario Junior 2 [40%]; Consultor senior Ingeniero Informatico 1; Consultor senior Ingeniero Informatico 2 |
| 53 | **Implementar el sistema de gestión de la configuración** | 2012-01-23 → 2012-05-01 (+99d) | 2012-02-14 → 2012-06-11 (+118d) | 15.9d → 29.39d |  | 19 → none |  |
| 54 | Inicio de la implementacion | 2012-01-23 → 2012-05-01 (+99d) | 2012-01-23 → 2012-05-01 (+99d) |  | 1.27d → 0d | 19 → 52 | resources none → Becario Junior 1 [40%]; Becario Junior 2 [40%]; Consultor senior Ingeniero Informatico 1; Consultor senior Ingeniero Informatico 2; Consultor senior Ingeniero Informatico 3 (Externo); Consultor especializado en ITIL [30%] |
| 59 | **Probar el sistema de gestión de la configuración** | 2012-01-09 → 2012-06-11 (+154d) | 2012-04-09 → 2012-06-25 (+77d) | 65.33d → 10d |  |  |  |
| 60 | Inicio de las pruebas | 2012-01-09 → 2012-06-11 (+154d) | 2012-01-09 → 2012-06-11 (+154d) |  | 65.33d → 0d | none → 58, 55, 56, 57 |  |
| 61 | **Definir plan de pruebas** | 2012-01-23 → 2012-06-11 (+140d) | 2012-03-26 → 2012-06-15 (+81d) | 45.12d → 4d |  |  |  |
| 62 | Plan de pruebas para la identificacion de CI's | 2012-01-23 → 2012-06-11 (+140d) | 2012-01-23 → 2012-06-15 (+144d) | 0.25d → 4d | 35.16d → 0d | 19 → 60 | resources Consultor senior Ingeniero Informatico 3 (Externo) [10%] → Becario Junior 1; Consultor senior Ingeniero Informatico 1 |
| 63 | Plan de pruebas para la implementacion de la CMBD | 2012-03-26 → 2012-06-11 (+77d) | 2012-03-26 → 2012-06-15 (+81d) | 0.5d → 4d |  | Finalizacion de la definicion → 60 | resources Consultor senior Ingeniero Informatico 1 [50%]; Consultor senior Ingeniero Informatico 2 [50%] → Becario Junior 2; Consultor senior Ingeniero Informatico 2 |
| 64 | Plan de pruebas para la aplicación en tiempo real | 2012-02-14 → 2012-06-11 (+118d) | 2012-02-15 → 2012-06-15 (+121d) | 0.5d → 4d | 28.71d → 0d | 53 → 60 | resources Consultor senior Ingeniero Informatico 1 [25%]; Consultor senior Ingeniero Informatico 2 [25%]; Consultor senior Ingeniero Informatico 3 (Externo) [50%] → Consultor senior Ingeniero Informatico 3 (Externo); Consultor senior Ingeniero Informatico 4 (Externo) |
| 65 | Presentar plan de pruebas | 2012-03-26 → 2012-06-15 (+81d) | 2012-03-27 → 2012-06-18 (+83d) | 0.21d → 0.5d |  |  | resources Becario Junior 2 [30%]; Becario Junior 1 [30%] → Becario Junior 1 [40%]; Becario Junior 2 [40%]; Consultor senior Ingeniero Informatico 1; Consultor senior Ingeniero Informatico 2; Consultor senior Ingeniero Informatico 3 (Externo); Consultor especializado en ITIL [30%] |
| 66 | Recoger feedback | 2012-03-27 → 2012-06-18 (+83d) | 2012-03-28 → 2012-06-19 (+83d) |  |  |  | resources Consultor senior Ingeniero Informatico 1 [25%]; Consultor senior Ingeniero Informatico 2 [25%] → Consultor especializado en ITIL; Consultor senior Ingeniero Informatico 1; Consultor senior Ingeniero Informatico 2; Becario Junior 2 [40%] |
| 68 | Interpretar resultados de las pruebas | 2012-04-05 → 2012-06-20 (+76d) | 2012-04-05 → 2012-06-21 (+77d) | 0.62d → 1.5d |  | 82, 75, 45 → 67 | resources Consultor senior Ingeniero Informatico 1 [60%]; Consultor senior Ingeniero Informatico 2 [60%]; Becario Junior 2 [30%]; Becario Junior 1 [30%] → Becario Junior 1 [40%]; Becario Junior 2 [40%]; Consultor senior Ingeniero Informatico 1; Consultor senior Ingeniero Informatico 2; Consultor senior Ingeniero Informatico 3 (Externo); Consultor especializado en ITIL [30%] |
| 69 | Preparar informe con el resultado de las pruebas | 2012-04-05 → 2012-06-21 (+77d) | 2012-04-09 → 2012-06-25 (+77d) | 1.45d → 2d |  |  | resources Consultor senior Ingeniero Informatico 1 [7%]; Consultor senior Ingeniero Informatico 2 [7%] → Becario Junior 1 [40%]; Becario Junior 2 [40%]; Consultor senior Ingeniero Informatico 1; Consultor senior Ingeniero Informatico 2; Consultor senior Ingeniero Informatico 3 (Externo); Consultor especializado en ITIL [30%] |
| 70 | Finalizacion de las pruebas | 2012-04-09 → 2012-06-25 (+77d) | 2012-04-09 → 2012-06-25 (+77d) |  |  | 61, 65, 66, Moficar plan de pruebas original con el nuevo feedback, 69 → 69 |  |
| 71 | **Importar datos de las herramientas de descubrimiento** | 2012-02-14 → 2012-06-25 (+132d) | 2012-03-30 → 2012-07-06 (+98d) | 33.32d → 9d |  | Finalizacion de la implementacion → none |  |
| 72 | Inicio de la importacion | 2012-02-14 → 2012-06-25 (+132d) | 2012-02-14 → 2012-06-25 (+132d) |  |  | Finalizacion de la implementacion → 70 |  |
| 73 | Definir plan de importacion | 2012-02-14 → 2012-06-25 (+132d) | 2012-02-15 → 2012-06-27 (+133d) | 0.67d → 2d |  |  | resources Consultor senior Ingeniero Informatico 1 [50%]; Consultor senior Ingeniero Informatico 2 [50%]; Consultor senior Ingeniero Informatico 3 (Externo) [50%] → Becario Junior 1 [40%]; Becario Junior 2 [40%]; Consultor senior Ingeniero Informatico 1; Consultor senior Ingeniero Informatico 2; Consultor senior Ingeniero Informatico 3 (Externo); Consultor especializado en ITIL [30%] |
| 74 | Localizar y comprobar la evolucion de la importacion | 2012-02-15 → 2012-06-27 (+133d) | 2012-03-28 → 2012-07-04 (+98d) | 30d → 5d |  |  | resources Proveedor A → Becario Junior 1 [40%]; Becario Junior 2 [40%]; Consultor senior Ingeniero Informatico 1; Consultor senior Ingeniero Informatico 2; Consultor senior Ingeniero Informatico 3 (Externo); Consultor especializado en ITIL [30%] |
| 75 | Pruebas de la aplicación en tiempo real | 2012-03-28 → 2012-07-04 (+98d) | 2012-03-29 → 2012-07-06 (+99d) | 1.1d → 2d | 0d → 3d | Moficar plan de pruebas original con el nuevo feedback, 74 → 74 | resources Consultor senior Ingeniero Informatico 2; Consultor senior Ingeniero Informatico 1; Consultor senior Ingeniero Informatico 3 (Externo); Becario Junior 1 [30%]; Becario Junior 2 [30%] → Consultor senior Ingeniero Informatico 1; Consultor senior Ingeniero Informatico 3 (Externo); Becario Junior 1 |
| 76 | Verificar la correcta recepcion de datos de la CMBD | 2012-03-29 → 2012-07-04 (+97d) | 2012-03-30 → 2012-07-05 (+97d) | 1.34d → 1d |  | 75 → 74 | resources Consultor senior Ingeniero Informatico 2; Consultor senior Ingeniero Informatico 1; Consultor especializado en ITIL; Becario Junior 1 [30%]; Becario Junior 2 [30%]; Consultor senior Ingeniero Informatico 3 (Externo) → Becario Junior 2; Consultor senior Ingeniero Informatico 2; Consultor senior Ingeniero Informatico 4 (Externo) |
| 77 | Entrega del documento de la importacion de datos | 2012-03-30 → 2012-07-05 (+97d) | 2012-03-30 → 2012-07-06 (+98d) | 0.21d → 1d |  |  | resources Becario Junior 1 [30%]; Becario Junior 2 [30%] → Consultor senior Ingeniero Informatico 2; Consultor especializado en ITIL [30%] |
| 78 | Finalizacion de la importacion | 2012-03-30 → 2012-07-06 (+98d) | 2012-03-30 → 2012-07-06 (+98d) |  |  | 73, 74, 75, 77 → 77 |  |
| 79 | **Realizar el Go live y apoyo pos-implementacion** | 2012-03-30 → 2012-07-06 (+98d) | 2012-04-06 → 2012-07-11 (+96d) | 4.66d → 3d |  | 78 → none |  |
| 80 | Inicio del apoyo pos-implementacion | 2012-03-30 → 2012-07-06 (+98d) | 2012-03-30 → 2012-07-06 (+98d) |  |  |  | resources none → Becario Junior 1; Consultor senior Ingeniero Informatico 1 |
| 81 | Observar la aplicación en funcionamiento | 2012-03-30 → 2012-07-06 (+98d) | 2012-04-02 → 2012-07-10 (+99d) | 0.69d → 2d |  |  | resources Consultor senior Ingeniero Informatico 1; Consultor senior Ingeniero Informatico 2; Consultor senior Ingeniero Informatico 3 (Externo); Becario Junior 1 [30%]; Becario Junior 2 [30%] → Becario Junior 2; Consultor senior Ingeniero Informatico 2 |
| 82 | Pruebas finales | 2012-04-02 → 2012-07-06 (+95d) | 2012-04-05 → 2012-07-10 (+96d) | 2.61d → 2d |  | 81 → 80 | resources Consultor senior Ingeniero Informatico 1; Consultor senior Ingeniero Informatico 2; Consultor especializado en ITIL; Becario Junior 1 [30%]; Becario Junior 2 [30%]; Consultor senior Ingeniero Informatico 3 (Externo) → Consultor senior Ingeniero Informatico 3 (Externo) |
| 83 | Reunion con los usuarios | 2012-04-05 → 2012-07-06 (+92d) | 2012-04-06 → 2012-07-09 (+94d) |  | 0.71d → 1d | 82 → 80 | resources Consultor especializado en ITIL [33.3%]; Consultor senior Ingeniero Informatico 1 [33.3%]; Consultor senior Ingeniero Informatico 2 [33.3%] → Consultor senior Ingeniero Informatico 4 (Externo); Consultor especializado en ITIL |
| 84 | Realizar ajustes de control | 2012-04-06 → 2012-07-10 (+95d) | 2012-04-06 → 2012-07-11 (+96d) | 0.36d → 1d | 0.71d → 0d | 83, 82 → 81, 82, 83 | resources Consultor senior Ingeniero Informatico 1 [93%]; Consultor senior Ingeniero Informatico 2 [93%]; Consultor especializado en ITIL → Consultor senior Ingeniero Informatico 1; Consultor senior Ingeniero Informatico 2 |
| 85 | Finalizacion del apoyo pos-implementacion | 2012-04-06 → 2012-07-11 (+96d) | 2012-04-06 → 2012-07-11 (+96d) |  | 0.71d → 0d | 84, 81, 82, 83 → 84 |  |

## Version 3 (saved 2012-06-20)

Note of the change: Push

Last finish stays 2012-07-11.

Changed:

| ID | Task | Other |
| --- | --- | --- |
| 3 | [HITO] Inicio del Analisis | was named Inicio del Analisis |
| 11 | [HITO] Aceptación de la documentacion recogida | was named HITO Aceptación de la documentacion recogida |
| 18 | [HITO] Finalización | was named Finalización |
| 20 | [HITO] Inicio de la definicion | was named Inicio de la definicion |
| 32 | [HITO] Aceptacion de la documentacion recogida | was named HITO Aceptacion de la documentacion recogida |
| 38 | [HITO] Aceptación | was named HITO Aceptación |
| 40 | [HITO] Finalizacion de la definicion | was named Finalizacion de la definicion |
| 42 | [HITO] Inicio de la definicion | was named Inicio de la definicion |
| 51 | [HITO] Finalización de la definiciónn | was named Finalización de la definiciónn |
| 54 | [HITO] Inicio de la implementacion | was named Inicio de la implementacion |
| 60 | [HITO] Inicio de las pruebas | was named Inicio de las pruebas |
| 70 | [HITO] Finalizacion de las pruebas | was named Finalizacion de las pruebas |
| 72 | [HITO] Inicio de la importacion | was named Inicio de la importacion |
| 78 | [HITO] Finalizacion de la importacion | was named Finalizacion de la importacion |
| 80 | [HITO] Inicio del apoyo pos-implementacion | was named Inicio del apoyo pos-implementacion |
| 85 | [HITO] Finalizacion del apoyo pos-implementacion | was named Finalizacion del apoyo pos-implementacion |
